# Sales Force PA4

How a schedule from MS Project changed from version to version. A marks actual dates.

## Version 1 (saved 2011-07-26)

| ID | WBS | Task | Duration | Start | Finish | Predecessors | Total float | Constraint |
| --- | --- | --- | --- | --- | --- | --- | --- | --- |
| 1 | 1 | **SALES FORCE** | 158d | 2011-04-29 | 2011-12-19 |  | 0d |  |
| 3 | 1.1 | **Gerenciamento do Projeto** | 158d | 2011-04-29 | 2011-12-19 |  | 0d |  |
| 4 | 1.1.1 | **Iniciação** | 4d | 2011-04-29 | 2011-05-04 |  | 0d |  |
| 5 |  | Milestone - Aprovação do Termo de Abertura | 0d | 2011-04-29 | 2011-04-29 |  | 0d | start no earlier than 2011-04-29 |
| 6 |  | Revisar o Termo de Abertura | 1d | 2011-05-02 | 2011-05-02 | 5FS+1d | 0d |  |
| 7 |  | Identificar os Envolvidos e Preparar o Registro dos Envolvidos | 2d | 2011-05-03 | 2011-05-04 | 6 | 0d |  |
| 8 | 1.1.2 | **Planejamento** | 7d | 2011-05-05 | 2011-05-13 |  | 0d |  |
| 9 |  | Desenvolver o Plano de Gerenciamento do Projeto - Preliminar | 2d | 2011-05-05 | 2011-05-06 | 7 | 0d |  |
| 10 |  | Desenvolver o Plano de Gerenciamento do Projeto - Completo | 5d | 2011-05-09 | 2011-05-13 | 9 | 147d |  |
| 11 | 1.1.3 | **Execução, Monitoramento e Controle** | 150d | 2011-05-09 | 2011-12-15 |  | 2d |  |
| 12 |  | Gerenciar a Definição dos Requisitos da Solução | 25d | 2011-05-09 | 2011-06-10 | 25SS | 127d |  |
| 13 |  | Gerenciar a Análise e Contratação de Fornecedores | 13d | 2011-06-13 | 2011-07-01 | 34SS | 114d |  |
| 14 |  | Gerenciar a Implantação | 74d | 2011-06-27 | 2011-10-07 | 40SS | 45d |  |
| 15 |  | Gerenciar a Definição do Projeto Piloto | 5d | 2011-09-26 | 2011-09-30 | 58SS | 50d |  |
| 16 |  | Gerenciar a Iniciação do Projeto Piloto | 2d | 2011-10-10 | 2011-10-11 | 60SS | 43d |  |
| 17 |  | Gerenciar a Execução do Projeto Piloto | 29d | 2011-10-13 | 2011-11-25 | 61SS | 14d |  |
| 18 |  | Gerenciar os Treinamentos | 22d | 2011-11-10 | 2011-12-15 | 63SS | 2d |  |
| 19 | 1.1.4 | **Encerramento** | 14d | 2011-11-28 | 2011-12-19 |  | 0d |  |
| 20 |  | Gerenciar a Preparação do Relatório de Transição e Atualização da Documentação de Sistemas | 5d | 2011-11-28 | 2011-12-02 | 79SS | 9d |  |
| 21 |  | Gerenciar a Reunião de Transição para Operação de Vendas | 1d | 2011-12-16 | 2011-12-16 | 80SS | 1d |  |
| 22 |  | Preparar Relatório Final | 5d | 2011-12-12 | 2011-12-16 | 80FS-5d | 0d |  |
| 23 |  | Atualizar Ativos de Processos Organizacionais | 1d | 2011-12-19 | 2011-12-19 | 22 | 0d |  |
| 24 |  | Término do Projeto | 0d | 2011-12-19 | 2011-12-19 | 23, 22, 80 | 0d |  |
| 25 | 1.2 | **Definição dos Requisitos da Solução** | 25d | 2011-05-09 | 2011-06-10 |  | 0d |  |
| 26 | 1.2.1 | **Coleta de Requisitos** | 5d | 2011-05-09 | 2011-05-13 |  | 0d |  |
| 27 |  | Coletar Requisitos | 5d | 2011-05-09 | 2011-05-13 | 9 | 0d |  |
| 28 | 1.2.2 | **Documento de Especificação Funcional** | 10d | 2011-05-16 | 2011-05-27 |  | 0d |  |
| 29 |  | Elaborar a Especificação Funcional | 9d | 2011-05-16 | 2011-05-26 | 27 | 0d |  |
| 30 |  | Revisar Especificação Funcional | 1d | 2011-05-27 | 2011-05-27 | 29 | 0d |  |
| 31 | 1.2.3 | **Documento de Especificação Técnica** | 15d | 2011-05-23 | 2011-06-10 |  | 0d |  |
| 32 |  | Elaborar a Especificação Técnica | 14d | 2011-05-23 | 2011-06-09 | 30FS-5d | 0d |  |
| 33 |  | Revisar a Especificação Técnica | 1d | 2011-06-10 | 2011-06-10 | 32 | 0d |  |
| 34 | 1.3 | **Análise e Contratação de Fornecedores** | 13d | 2011-06-13 | 2011-07-01 |  | 0d |  |
| 35 |  | Solicitar Proposta aos Fornecedores | 2d | 2011-06-13 | 2011-06-14 | 33 | 0d |  |
| 36 |  | Milestone - Recebimento das Propostas | 0d | 2011-06-20 | 2011-06-20 | 35FS+4d | 0d |  |
| 37 |  | Analisar Propostas Técnicas | 2d | 2011-06-21 | 2011-06-22 | 36 | 0d |  |
| 38 |  | Analisar Propostas Comerciais | 1d | 2011-06-27 | 2011-06-27 | 37 | 0d |  |
| 39 |  | Escolher e Contratar Fornecedores | 4d | 2011-06-28 | 2011-07-01 | 38 | 0d |  |
| 40 | 1.4 | **Implantação** | 74d | 2011-06-27 | 2011-10-07 |  | 10d |  |
| 41 | 1.4.1 | **Desenvolvimento** | 20d | 2011-06-27 | 2011-07-22 |  | 10d |  |
| 42 |  | Desenvolver Rotina de Interface Salesforce x ERP | 20d | 2011-06-27 | 2011-07-22 | 37 | 10d |  |
| 43 | 1.4.2 | **Auditoria dos Servidores** | 5d | 2011-07-11 | 2011-07-15 |  | 104d |  |
| 44 |  | Executar Auditoria nos Servidores | 5d | 2011-07-11 | 2011-07-15 | 42FS-10d | 104d |  |
| 45 | 1.4.3 | **Instalação da Solução** | 15d | 2011-08-01 | 2011-08-19 |  | 0d |  |
| 46 |  | Instalar e Configurar o Sofware no Servidor | 5d | 2011-08-01 | 2011-08-05 | 39FS+20d | 0d |  |
| 47 |  | Instalar e Configurar a Rotina de Interface | 5d | 2011-08-08 | 2011-08-12 | 42, 46 | 0d |  |
| 48 |  | Instalar e Configurar o Software nos Terminais Móveis de Teste | 5d | 2011-08-15 | 2011-08-19 | 39FS+20d, 47 | 0d |  |
| 49 | 1.4.4 | **Testes** | 34d | 2011-08-22 | 2011-10-07 |  | 0d |  |
| 50 | 1.4.4.1 | **Testes de Integração** | 14d | 2011-08-22 | 2011-09-09 |  | 0d |  |
| 51 |  | Executar os testes de Integração | 14d | 2011-08-22 | 2011-09-09 | 48 | 0d |  |
| 52 |  | Corrigir falhas | 14d | 2011-08-22 | 2011-09-09 | 48 | 0d |  |
| 53 | 1.4.4.2 | **Testes de Homologação** | 20d | 2011-09-12 | 2011-10-07 |  | 0d |  |
| 54 |  | Executar os testes de Homologação | 20d | 2011-09-12 | 2011-10-07 | 50 | 0d |  |
| 55 |  | Corrigir falhas | 20d | 2011-09-12 | 2011-10-07 | 50 | 0d |  |
| 56 | 1.5 | **Projeto Piloto** | 41d | 2011-09-26 | 2011-11-25 |  | 0d |  |
| 57 | 1.5.1 | **Definição do Projeto Piloto** | 5d | 2011-09-26 | 2011-09-30 |  | 36d |  |
| 58 |  | Definir Projeto Piloto | 5d | 2011-09-26 | 2011-09-30 | 53FS-10d | 36d |  |
| 59 | 1.5.2 | **Execução do Projeto Piloto** | 31d | 2011-10-10 | 2011-11-25 |  | 0d |  |
| 60 |  | Iniciar o Projeto Piloto | 2d | 2011-10-10 | 2011-10-11 | 49 | 0d |  |
| 61 |  | Acompanhar Projeto Piloto | 29d | 2011-10-13 | 2011-11-25 | 60 | 0d |  |
| 62 |  | Milestone - Projeto Piloto Concluído | 0d | 2011-11-25 | 2011-11-25 | 61 | 0d |  |
| 63 | 1.6 | **Treinamentos** | 22d | 2011-11-10 | 2011-12-15 |  | 2d |  |
| 64 | 1.6.1 | **Desenvolvimento dos Treinamentos** | 15d | 2011-11-10 | 2011-12-02 |  | 9d |  |
| 65 |  | Elaborar Treinamento | 10d | 2011-11-10 | 2011-11-25 | 61FS-10d | 9d |  |
| 66 |  | Preparar Material e Infraestrutura | 5d | 2011-11-28 | 2011-12-02 | 65 | 9d |  |
| 67 | 1.6.2 | **Preparação Terminais Móveis das Equipes de Vendas Externas** | 5d | 2011-11-28 | 2011-12-02 |  | 0d |  |
| 68 |  | Instalar e Configurar o Software nos Terminais Móveis dos Vendedores Externos | 5d | 2011-11-28 | 2011-12-02 | 56 | 0d |  |
| 69 | 1.6.3 | **Treinamento Equipe de Suporte/TI** | 3d | 2011-12-05 | 2011-12-07 |  | 0d |  |
| 70 |  | Executar Treinamento Teórico | 1d | 2011-12-05 | 2011-12-05 | 61, 67 | 0d |  |
| 71 |  | Executar Treinamento Prático | 2d | 2011-12-06 | 2011-12-07 | 70 | 0d |  |

| ID | WBS | Task | Duration | Start | Finish | Predecessors | Total float |
| --- | --- | --- | --- | --- | --- | --- | --- |
| 72 | 1.6.4 | **Treinamento Funcionários Setor de Vendas (Internos)** | 2d | 2011-12-12 | 2011-12-13 |  | 0d |
| 73 |  | Executar Treinamento Teórico | 1d | 2011-12-12 | 2011-12-12 | 71 | 0d |
| 74 |  | Executar Treinamento Prático | 1d | 2011-12-13 | 2011-12-13 | 73 | 0d |
| 75 | 1.6.5 | **Treinamento Vendedores Externos** | 2d | 2011-12-14 | 2011-12-15 |  | 0d |
| 76 |  | Executar Treinamento Teórico | 1d | 2011-12-14 | 2011-12-14 | 74 | 0d |
| 77 |  | Executar Treinamento Prático | 1d | 2011-12-15 | 2011-12-15 | 76 | 0d |
| 78 | 1.7 | **Transição para Operação de Vendas e Suporte** | 13d | 2011-11-28 | 2011-12-16 |  | 1d |
| 79 |  | Preparar Relatório de Transição e Atualizar Documentação de Sistemas | 5d | 2011-11-28 | 2011-12-02 | 56 | 9d |
| 80 |  | Efetuar Transição para Operação de Vendas e Suporte | 1d | 2011-12-16 | 2011-12-16 | 77 | 0d |

## Version 2 (saved 2011-07-30)

Last finish stays 2011-12-19.

Changed:

| ID | Task | Other |
| --- | --- | --- |
| 37 | Analisar Propostas Técnicas | resources Analista de Compras → Analista de Compras; Analista de Requisitos |

## Version 3 (saved 2011-08-04)

Last finish stays 2011-12-19.

Added:

| ID | Task | Duration | Start | Finish | Constraint | Resources |
| --- | --- | --- | --- | --- | --- | --- |
| 79 | Jantar de Confraternização | 0d | 2011-12-16 | 2011-12-16 | start no earlier than 2011-12-16 | Jantar de Confraternização |
| 81 | Reserva de Contingência | 0d | 2011-05-02 | 2011-05-02 |  | Reserva de Contingência |

Removed: 67 Preparação Terminais Móveis das Equipes de Vendas Externas; 68 Instalar e Configurar o Software nos Terminais Móveis dos Vendedores Externos

Changed:

| ID | Task | Total float | Predecessors | Other |
| --- | --- | --- | --- | --- |
| 39 | Escolher e Contratar Fornecedores |  |  | resources Analista de Compras → Analista de Compras; Software Terminal Móvel; Terminal Móvel (Galaxy Ace) Comodato [6000%] |
| 66 | Preparar Material e Infraestrutura | 9d → 0d |  | resources Analista de RH → Analista de Implantação |
| 68 | Executar Treinamento Teórico |  | 61, Preparação Terminais Móveis das Equipes de Vendas Externas → 62, 64 | resources Analista de RH [20%]; Analista de Implantação → Analista de Implantação; Coffe Break [1200%]; Apostila Treinamento [500%]; Material Treinamento [500%] |
| 69 | Executar Treinamento Prático |  |  | resources Analista de RH [20%]; Analista de Implantação → Analista de Implantação; Coffe Break [2400%] |
| 71 | Executar Treinamento Teórico |  |  | resources Analista de Implantação; Analista de RH [20%] → Analista de Implantação; Coffe Break [1600%]; Apostila Treinamento [700%]; Material Treinamento [700%] |
| 72 | Executar Treinamento Prático |  |  | resources Analista de Implantação; Analista de RH [20%] → Analista de Implantação; Coffe Break [1600%] |
| 74 | Executar Treinamento Teórico |  |  | resources Analista de Implantação; Analista de RH [20%] → Analista de Implantação; Coffe Break [11200%]; Apostila Treinamento [5500%]; Material Treinamento [5500%] |
| 75 | Executar Treinamento Prático |  |  | resources Analista de Implantação; Analista de RH [20%] → Analista de Implantação; Coffe Break [11200%] |
