# Sales Force PA4

How a schedule from MS Project changed from version to version. A marks actual dates.

## Version 1 (saved 2011-07-23)

| ID | WBS | Task | Duration | Start | Finish | Predecessors | Total float | Constraint |
| --- | --- | --- | --- | --- | --- | --- | --- | --- |
| 1 | 1 | **SALES FORCE** | 166d? | 2011-04-29 | 2011-12-16 |  | 0d |  |
| 3 | 1.1 | **Gerenciamento do Projeto** | 166d? | 2011-04-29 | 2011-12-16 |  | 0d |  |
| 4 | 1.1.1 | **Iniciação** | 4d? | 2011-04-29 | 2011-05-04 |  | 162d |  |
| 5 |  | Aprovação do Termo de Abertura | 0d | 2011-04-29 | 2011-04-29 |  | 163d | start no earlier than 2011-04-29 |
| 6 |  | Revisar o Termo de Abertura | 1d? | 2011-05-02 | 2011-05-02 | 5 | 162d | start no earlier than 2011-05-02 |
| 7 |  | Identificar os Envolvidos | 2d | 2011-05-03 | 2011-05-04 | 6 | 162d | start no earlier than 2011-05-03 |
| 8 | 1.1.2 | **Planejamento** | 7d? | 2011-05-05 | 2011-05-13 |  | 155d |  |
| 9 |  | Desenvolver o Plano de Gerenciamento do Projeto | 2d? | 2011-05-05 | 2011-05-06 | 6 | 160d | finish no earlier than 2011-05-06 |
| 10 |  | Desenvolver o Plano de Gerenciamento do Projeto | 5d? | 2011-05-09 | 2011-05-13 |  | 155d | start no earlier than 2011-05-09 |
| 11 | 1.1.3 | **Execução, Monitoramento e Controle** | 158d? | 2011-05-09 | 2011-12-14 |  | 2d |  |
| 12 |  | Gerenciar a Definição dos Requisitos da Solução | 30d? | 2011-05-09 | 2011-06-17 |  | 52d | finish no earlier than 2011-06-17 |
| 13 |  | Gerenciar a Análise e Contratação de Fornecedores | 10d? | 2011-06-20 | 2011-07-01 | 12 | 52d | finish no earlier than 2011-06-24 |
| 14 |  | Gerenciar a Implantação | 68d | 2011-07-04 | 2011-10-05 | 13 | 52d | start no earlier than 2011-07-04 |
| 15 |  | Gerenciar a Definição do Projeto Piloto | 5d? | 2011-09-19 | 2011-09-23 |  | 60d | start no earlier than 2011-09-19 |
| 16 |  | Gerenciar a Iniciação do Projeto Piloto | 2d? | 2011-10-10 | 2011-10-11 |  | 48d | finish no earlier than 2011-10-11 |
| 17 |  | Gerenciar a Execução do Projeto Piloto | 33d? | 2011-10-12 | 2011-11-25 |  | 9.5d | start no earlier than 2011-10-12 |
| 18 |  | Avaliar Resultados do Projeto Piloto | 3d | 2011-11-28 | 2011-11-30 | 17 | 9.5d |  |
| 19 |  | Preparar e Apresentar Relatório Final do Projeto Piloto | 2.5d | 2011-12-01 | 2011-12-05 | 18 | 9.5d | finish no earlier than 2011-12-02 |
| 20 |  | Gerenciar o Treinamento | 18d? | 2011-11-21 | 2011-12-14 |  | 2d | finish no earlier than 2011-12-14 |
| 21 | 1.1.4 | **Encerramento** | 2d? | 2011-12-15 | 2011-12-16 |  | 0d |  |
| 22 |  | Encerar o Projeto | 2d? | 2011-12-15 | 2011-12-16 |  | 0d | finish no earlier than 2011-12-16 |
| 24 | 1.2 | **Definição dos Requisitos da Solução** | 30d? | 2011-05-09 | 2011-06-17 |  | 100d |  |
| 25 | 1.2.1 | **Coleta de Requisitos** | 5d? | 2011-05-09 | 2011-05-13 |  | 100d |  |
| 26 |  | Coletar Requisitos | 5d? | 2011-05-09 | 2011-05-13 |  | 100d | finish no earlier than 2011-05-13 |
| 27 | 1.2.2 | **Documento de Especificação Funcional** | 10d? | 2011-05-16 | 2011-05-27 |  | 100d |  |
| 28 |  | Elaborar a Especificação Funcional | 9d? | 2011-05-16 | 2011-05-26 | 26 | 100d | start no earlier than 2011-05-09 |
| 29 |  | Inspecionar a Especificação Funcional | 1d? | 2011-05-27 | 2011-05-27 | 28 | 100d | finish no earlier than 2011-05-20 |
| 30 | 1.2.3 | **Documento de Especificação Técnica** | 15d? | 2011-05-30 | 2011-06-17 |  | 100d |  |
| 31 |  | Elaborar a Especificação Técnica | 14d? | 2011-05-30 | 2011-06-16 | 29 | 100d | finish no earlier than 2011-06-09 |
| 32 |  | Inspecionar a Especificação Técnica | 1d? | 2011-06-17 | 2011-06-17 | 31 | 100d | finish no earlier than 2011-06-10 |
| 34 | 1.3 | **Análise e Contratação de Fornecedores** | 10d? | 2011-06-20 | 2011-07-01 |  | 100d |  |
| 35 |  | Solicitar Proposta aos Fornecedores | 2d? | 2011-06-20 | 2011-06-21 | 32 | 100d | start no earlier than 2011-06-13 |
| 36 |  | Recebimento das Propostas | 0d | 2011-06-27 | 2011-06-27 | 35 | 97d | start no earlier than 2011-06-27 |
| 37 |  | Analisar Propostas Técnicas | 2d | 2011-06-27 | 2011-06-28 | 36 | 97d | start no earlier than 2011-06-20 |
| 38 |  | Analisar Propostas Cormeciais | 1d | 2011-06-29 | 2011-06-29 | 37 | 97d |  |
| 39 |  | Escolher e Contratar Fornecedor | 2d | 2011-06-30 | 2011-07-01 | 38 | 120d |  |
| 41 | 1.4 | **Implantação** | 68d | 2011-07-04 | 2011-10-05 |  | 52d |  |
| 42 | 1.4.1 | **Desenvolvimento** | 20d | 2011-07-04 | 2011-07-29 |  | 95d |  |
| 43 |  | Desenvolver Rotina de Interface ERP x Salesforce | 20d | 2011-07-04 | 2011-07-29 | 38 | 95d | start no earlier than 2011-07-04 |
| 44 | 1.4.2 | **Homologação dos Servidores** | 5d | 2011-07-25 | 2011-07-29 |  | 100d |  |
| 45 |  | Executar os Testes de Homologação dos Servidores | 5d | 2011-07-25 | 2011-07-29 |  | 100d | start no earlier than 2011-07-25 |
| 46 | 1.4.3 | **Instalação da Solução** | 5d | 2011-08-01 | 2011-08-05 |  | 95d |  |
| 47 |  | Instalar e Configurar o Mobile Software | 5d | 2011-08-01 | 2011-08-05 | 38 | 95d | start no earlier than 2011-08-01 |
| 48 |  | Instalar e Configurar a Rotina de Interface | 5d | 2011-08-01 | 2011-08-05 | 43 | 95d |  |
| 49 | 1.4.4 | **Testes** | 35d | 2011-08-15 | 2011-09-30 |  | 55d |  |
| 50 | 1.4.4.1 | **Testes de Integração** | 15d | 2011-08-15 | 2011-09-02 |  | 75d |  |
| 51 |  | Executar os testes de Integração | 15d | 2011-08-15 | 2011-09-02 |  | 75d | start no earlier than 2011-08-15 |
| 52 |  | Corrigir falhas | 15d | 2011-08-15 | 2011-09-02 |  | 75d | start no earlier than 2011-08-15 |
| 53 | 1.4.4.2 | **Testes de Homologação** | 20d | 2011-09-05 | 2011-09-30 |  | 55d |  |
| 54 |  | Executar os testes de Homologação | 20d | 2011-09-05 | 2011-09-30 |  | 55d | start no earlier than 2011-09-05 |
| 55 |  | Corrigir falhas | 20d | 2011-09-05 | 2011-09-30 |  | 55d | start no earlier than 2011-09-05 |
| 56 | 1.4.5 | **Avaliação dos Resultados da Implantação** | 3d | 2011-10-03 | 2011-10-05 |  | 52d |  |
| 57 |  | Avaliar Resultados da Implantação | 3d | 2011-10-03 | 2011-10-05 |  | 52d | start no earlier than 2011-10-03 |
| 59 | 1.5 | **Projeto Piloto** | 55d? | 2011-09-19 | 2011-12-02 |  | 10d |  |
| 60 | 1.5.1 | **Definição do Projeto Piloto** | 5d? | 2011-09-19 | 2011-09-23 |  | 60d |  |
| 61 |  | Definir Projeto Piloto | 5d? | 2011-09-19 | 2011-09-23 |  | 60d | finish no earlier than 2011-09-23 |
| 62 | 1.5.2 | **Execução do Projeto Piloto** | 35d? | 2011-10-10 | 2011-11-25 |  | 15d |  |
| 63 |  | Iniciar o Projeto Piloto | 2d | 2011-10-10 | 2011-10-11 |  | 15d | start no earlier than 2011-10-10 |
| 64 |  | Suportar o Projeto Piloto | 33d? | 2011-10-12 | 2011-11-25 | 63 | 15d |  |
| 65 | 1.5.3 | **Avaliação dos Resultados do Projeto Piloto** | 5d | 2011-11-28 | 2011-12-02 |  | 10d |  |
| 66 |  | Avaliar Resultados do Projeto Piloto | 3d | 2011-11-28 | 2011-11-30 |  | 12d | start no earlier than 2011-11-28 |
| 67 |  | Preparar e Apresentar Relatório Final do Projeto Piloto | 2d | 2011-12-01 | 2011-12-02 |  | 10d | start no earlier than 2011-12-01 |
| 69 | 1.6 | **Treinamentos** | 18d? | 2011-11-21 | 2011-12-14 |  | 2d |  |
| 70 | 1.6.1 | **Desenvolvimento dos Treinamentos** | 10d | 2011-11-21 | 2011-12-02 |  | 6d |  |
| 71 |  | Elaborar Treinamento | 5d | 2011-11-21 | 2011-11-25 |  | 6d | start no earlier than 2011-11-21 |
| 72 |  | Preparar Material e Infraestrutura | 5d | 2011-11-28 | 2011-12-02 | 71 | 6d | start no earlier than 2011-11-28 |
| 73 | 1.6.2 | **Treinamento Equipe de Suporte/TI** | 3d? | 2011-12-05 | 2011-12-07 |  | 6d |  |
| 74 |  | Executar Treinamento Teórico | 1d | 2011-12-05 | 2011-12-05 | 72 | 6d | start no earlier than 2011-12-05 |
| 75 |  | Executar Treinamento Prático | 2d? | 2011-12-06 | 2011-12-07 | 74 | 6d | finish no earlier than 2011-12-07 |
| 76 | 1.6.3 | **Treinamento Funcionários Setor de Vendas** | 2d? | 2011-12-08 | 2011-12-09 |  | 5d |  |

| ID | WBS | Task | Duration | Start | Finish | Predecessors | Total float | Constraint |
| --- | --- | --- | --- | --- | --- | --- | --- | --- |
| 77 |  | Executar Treinamento Teórico | 1d? | 2011-12-08 | 2011-12-08 | 72 | 5d | start no earlier than 2011-12-08 |
| 78 |  | Executar Treinamento Prático | 1d | 2011-12-09 | 2011-12-09 | 77 | 5d | start no earlier than 2011-12-09 |
| 79 | 1.6.4 | **Treinamento Vendedores Externos** | 2d? | 2011-12-12 | 2011-12-13 |  | 2d |  |
| 80 |  | Executar Treinamento Teórico | 1d? | 2011-12-12 | 2011-12-12 | 72 | 2d | start no earlier than 2011-12-12 |
| 81 |  | Executar Treinamento Prático | 1d | 2011-12-13 | 2011-12-13 | 80 | 2d | start no earlier than 2011-12-13 |
| 82 | 1.6.5 | **Avaliação dos Resultados dos Treinamentos** | 1d | 2011-12-14 | 2011-12-14 |  | 2d |  |
| 83 |  | Avaliar os Resultados dos Treinamentos | 1d | 2011-12-14 | 2011-12-14 | 72, 75, 81 | 2d | start no earlier than 2011-12-14 |

## Version 2 (saved 2011-07-30)

Last finish 2011-12-16 → 2011-12-15 (-1d).

Added:

| ID | Task | Duration | Start | Finish | Predecessors | Resources |
| --- | --- | --- | --- | --- | --- | --- |
| 20 | Gerenciar a Preparação do Relatório de Transição e Atualização da Documentação de Sistemas | 5d | 2011-11-28 | 2011-12-02 | 77SS | Gerente de Projeto [20%] |
| 21 | Gerenciar a Reunião de Transição para Operação de Vendas | 1d | 2011-12-07 | 2011-12-07 | 78SS | Gerente de Projeto [50%] |
| 22 | Preparar Relatório Final | 5d | 2011-12-01 | 2011-12-07 | 78FS-5d | Gerente de Projeto [50%] |
| 24 | Término do Projeto | 0d | 2011-12-12 | 2011-12-12 | 23, 22, 78 |  |
| 36 | Milestone - Recebimento das Propostas | 0d | 2011-06-20 | 2011-06-20 | 35FS+4d |  |
| 48 | Instalar e Configurar o Software nos Terminais Móveis de Teste | 5d | 2011-08-15 | 2011-08-19 | 39FS+20d, 47 | Analista de Ambiente |
| 62 | Milestone - Projeto Piloto Concluído | 0d | 2011-11-25 | 2011-11-25 | 61 |  |
| 76 | **Transição para Operação de Vendas e Suporte** | 8d | 2011-11-28 | 2011-12-07 |  |  |
| 77 | Preparar Relatório de Transição e Atualizar Documentação de Sistemas | 5d | 2011-11-28 | 2011-12-02 | 56 | Analista de Implantação |
| 78 | Efetuar Transição para Operação de Vendas e Suporte | 1d | 2011-12-07 | 2011-12-07 | 75 | Analista de Implantação |

Removed: 18 Avaliar Resultados do Projeto Piloto; 19 Preparar e Apresentar Relatório Final do Projeto Piloto; 36 Recebimento das Propostas; 56 Avaliação dos Resultados da Implantação; 57 Avaliar Resultados da Implantação; 65 Avaliação dos Resultados do Projeto Piloto; 66 Avaliar Resultados do Projeto Piloto; 67 Preparar e Apresentar Relatório Final do Projeto Piloto; 82 Avaliação dos Resultados dos Treinamentos; 83 Avaliar os Resultados dos Treinamentos

Changed:

| ID | Task | Start | Finish | Duration | Total float | Predecessors | Other |
| --- | --- | --- | --- | --- | --- | --- | --- |
| 1 | **SALES FORCE** |  | 2011-12-16 → 2011-12-15 (-1d) | 166d? → 156d |  |  |  |
| 3 | **Gerenciamento do Projeto** |  | 2011-12-16 → 2011-12-15 (-1d) | 166d? → 156d |  |  |  |
| 4 | **Iniciação** |  |  | 4d? → 4d | 162d → 3d |  |  |
| 5 | Milestone - Aprovação do Termo de Abertura |  |  |  | 163d → 3d |  | was named Aprovação do Termo de Abertura |
| 6 | Revisar o Termo de Abertura |  |  | 1d? → 1d | 162d → 3d | 5 → 5FS+1d | constraint start no earlier than 2011-05-02 → none |
| 7 | Identificar os Envolvidos e Preparar o Registro dos Envolvidos |  |  |  | 162d → 3d |  | was named Identificar os Envolvidos; constraint start no earlier than 2011-05-03 → none |
| 8 | **Planejamento** |  |  | 7d? → 7d | 155d → 3d |  |  |
| 9 | Desenvolver o Plano de Gerenciamento do Projeto - Preliminar |  |  | 2d? → 2d | 160d → 3d | 6 → 7 | was named Desenvolver o Plano de Gerenciamento do Projeto; constraint finish no earlier than 2011-05-06 → none |
| 10 | Desenvolver o Plano de Gerenciamento do Projeto - Completo |  |  | 5d? → 5d | 155d → 147d | none → 9 | was named Desenvolver o Plano de Gerenciamento do Projeto; constraint start no earlier than 2011-05-09 → none |
| 11 | **Execução, Monitoramento e Controle** |  | 2011-12-14 → 2011-12-15 (+1d) | 158d? → 150d | 2d → 0d |  |  |
| 12 | Gerenciar a Definição dos Requisitos da Solução |  | 2011-06-17 → 2011-06-10 (-7d) | 30d? → 25d | 52d → 125d | none → 25SS | constraint finish no earlier than 2011-06-17 → none |
| 13 | Gerenciar a Análise e Contratação de Fornecedores | 2011-06-20 → 2011-06-13 (-7d) |  | 10d? → 13d | 52d → 112d | 12 → 34SS | constraint finish no earlier than 2011-06-24 → none; resources Gerente de Projeto [10%] → Gerente de Projeto [15.4%] |
| 14 | Gerenciar a Implantação | 2011-07-04 → 2011-06-27 (-7d) | 2011-10-05 → 2011-10-07 (+2d) | 68d → 74d | 52d → 43d | 13 → 40SS | constraint start no earlier than 2011-07-04 → none; resources Gerente de Projeto [20%] → Gerente de Projeto [20.3%] |
| 15 | Gerenciar a Definição do Projeto Piloto | 2011-09-19 → 2011-09-26 (+7d) | 2011-09-23 → 2011-09-30 (+7d) | 5d? → 5d | 60d → 50d | none → 58SS | constraint start no earlier than 2011-09-19 → none |
| 16 | Gerenciar a Iniciação do Projeto Piloto |  |  | 2d? → 2d | 48d → 41d | none → 60SS | constraint finish no earlier than 2011-10-11 → none; resources Gerente de Projeto [50%] → Gerente de Projeto [25%] |
| 17 | Gerenciar a Execução do Projeto Piloto | 2011-10-12 → 2011-10-13 (+1d) |  | 33d? → 29d | 9.5d → 12d | none → 61SS | constraint start no earlier than 2011-10-12 → none; resources Gerente de Projeto [10%] → Gerente de Projeto [15.1%] |
| 18 | Gerenciar os Treinamentos | 2011-11-21 → 2011-11-10 (-11d) | 2011-12-14 → 2011-12-15 (+1d) | 18d? → 22d | 2d → 0d | none → 63SS | was named Gerenciar o Treinamento; constraint finish no earlier than 2011-12-14 → none; resources Gerente de Projeto [20%] → Gerente de Projeto [20.5%] |
| 19 | **Encerramento** | 2011-12-15 → 2011-11-28 (-17d) | 2011-12-16 → 2011-12-12 (-4d) | 2d? → 9d | 0d → 3d |  |  |
| 23 | Atualizar Ativos de Processos Organizacionais | 2011-12-15 → 2011-12-12 (-3d) | 2011-12-16 → 2011-12-12 (-4d) | 2d? → 1d | 0d → 3d | none → 22 | was named Encerar o Projeto; constraint finish no earlier than 2011-12-16 → none |
| 25 | **Definição dos Requisitos da Solução** |  | 2011-06-17 → 2011-06-10 (-7d) | 30d? → 25d | 100d → 3d |  |  |
| 26 | **Coleta de Requisitos** |  |  | 5d? → 5d | 100d → 3d |  |  |
| 27 | Coletar Requisitos |  |  | 5d? → 5d | 100d → 3d | none → 9 | constraint finish no earlier than 2011-05-13 → none |
| 28 | **Documento de Especificação Funcional** |  |  | 10d? → 10d | 100d → 3d |  |  |
| 29 | Elaborar a Especificação Funcional |  |  | 9d? → 9d | 100d → 3d |  | constraint start no earlier than 2011-05-09 → none |
| 30 | Revisar Especificação Funcional |  |  | 1d? → 1d | 100d → 3d |  | was named Inspecionar a Especificação Funcional; constraint finish no earlier than 2011-05-20 → none |
| 31 | **Documento de Especificação Técnica** | 2011-05-30 → 2011-05-23 (-7d) | 2011-06-17 → 2011-06-10 (-7d) | 15d? → 15d | 100d → 3d |  |  |
| 32 | Elaborar a Especificação Técnica | 2011-05-30 → 2011-05-23 (-7d) | 2011-06-16 → 2011-06-09 (-7d) | 14d? → 14d | 100d → 3d | 30 → 30FS-5d | constraint finish no earlier than 2011-06-09 → none |
| 33 | Revisar a Especificação Técnica | 2011-06-17 → 2011-06-10 (-7d) | 2011-06-17 → 2011-06-10 (-7d) | 1d? → 1d | 100d → 3d |  | was named Inspecionar a Especificação Técnica; constraint finish no earlier than 2011-06-10 → none |
| 34 | **Análise e Contratação de Fornecedores** | 2011-06-20 → 2011-06-13 (-7d) |  | 10d? → 13d | 100d → 3d |  |  |
| 35 | Solicitar Proposta aos Fornecedores | 2011-06-20 → 2011-06-13 (-7d) | 2011-06-21 → 2011-06-14 (-7d) | 2d? → 2d | 100d → 3d |  | constraint start no earlier than 2011-06-13 → none |
| 37 | Analisar Propostas Técnicas | 2011-06-27 → 2011-06-21 (-6d) | 2011-06-28 → 2011-06-22 (-6d) |  | 97d → 3d | Recebimento das Propostas → 36 | constraint start no earlier than 2011-06-20 → none; resources Analista de Compras → Analista de Compras; Analista de Requisitos |
| 38 | Analisar Propostas Comerciais | 2011-06-29 → 2011-06-27 (-2d) | 2011-06-29 → 2011-06-27 (-2d) |  | 97d → 3d |  | was named Analisar Propostas Cormeciais |
| 39 | Escolher e Contratar Fornecedores | 2011-06-30 → 2011-06-28 (-2d) |  | 2d → 4d | 120d → 3d |  | was named Escolher e Contratar Fornecedor |
| 40 | **Implantação** | 2011-07-04 → 2011-06-27 (-7d) | 2011-10-05 → 2011-10-07 (+2d) | 68d → 74d | 52d → 13d |  |  |
| 41 | **Desenvolvimento** | 2011-07-04 → 2011-06-27 (-7d) | 2011-07-29 → 2011-07-22 (-7d) |  | 95d → 13d |  |  |
| 42 | Desenvolver Rotina de Interface Salesforce x ERP | 2011-07-04 → 2011-06-27 (-7d) | 2011-07-29 → 2011-07-22 (-7d) |  | 95d → 10d | 38 → 37 | was named Desenvolver Rotina de Interface ERP x Salesforce; constraint start no earlier than 2011-07-04 → none |
| 43 | **Auditoria dos Servidores** | 2011-07-25 → 2011-07-11 (-14d) | 2011-07-29 → 2011-07-15 (-14d) |  | 100d → 102d |  | was named Homologação dos Servidores |
| 44 | Executar Auditoria nos Servidores | 2011-07-25 → 2011-07-11 (-14d) | 2011-07-29 → 2011-07-15 (-14d) |  | 100d → 102d | none → 42FS-10d | was named Executar os Testes de Homologação dos Servidores; constraint start no earlier than 2011-07-25 → none |
| 45 | **Instalação da Solução** |  | 2011-08-05 → 2011-08-19 (+14d) | 5d → 15d | 95d → 3d |  |  |
| 46 | Instalar e Configurar o Sofware no Servidor |  |  |  | 95d → 3d | 38 → 39FS+20d | was named Instalar e Configurar o Mobile Software; constraint start no earlier than 2011-08-01 → none |
| 47 | Instalar e Configurar a Rotina de Interface | 2011-08-01 → 2011-08-08 (+7d) | 2011-08-05 → 2011-08-12 (+7d) |  | 95d → 3d | 42 → 42, 46 |  |
| 49 | **Testes** | 2011-08-15 → 2011-08-22 (+7d) | 2011-09-30 → 2011-10-07 (+7d) | 35d → 34d | 55d → 3d |  |  |
| 50 | **Testes de Integração** | 2011-08-15 → 2011-08-22 (+7d) | 2011-09-02 → 2011-09-09 (+7d) | 15d → 14d | 75d → 3d |  |  |
| 51 | Executar os testes de Integração | 2011-08-15 → 2011-08-22 (+7d) | 2011-09-02 → 2011-09-09 (+7d) | 15d → 14d | 75d → 3d | none → 48 | constraint start no earlier than 2011-08-15 → none |
| 52 | Corrigir falhas | 2011-08-15 → 2011-08-22 (+7d) | 2011-09-02 → 2011-09-09 (+7d) | 15d → 14d | 75d → 3d | none → 48 | constraint start no earlier than 2011-08-15 → none; resources Analista Desenvolvedor [10%] → Analista Desenvolvedor [25%] |
| 53 | **Testes de Homologação** | 2011-09-05 → 2011-09-12 (+7d) | 2011-09-30 → 2011-10-07 (+7d) |  | 55d → 3d |  |  |
| 54 | Executar os testes de Homologação | 2011-09-05 → 2011-09-12 (+7d) | 2011-09-30 → 2011-10-07 (+7d) |  | 55d → 3d | none → 50 | constraint start no earlier than 2011-09-05 → none |
| 55 | Corrigir falhas | 2011-09-05 → 2011-09-12 (+7d) | 2011-09-30 → 2011-10-07 (+7d) |  | 55d → 3d | none → 50 | constraint start no earlier than 2011-09-05 → none; resources Analista Desenvolvedor [10%] → Analista Desenvolvedor [25%] |
| 56 | **Projeto Piloto** | 2011-09-19 → 2011-09-26 (+7d) | 2011-12-02 → 2011-11-25 (-7d) | 55d? → 41d | 10d → 7d |  |  |
| 57 | **Definição do Projeto Piloto** | 2011-09-19 → 2011-09-26 (+7d) | 2011-09-23 → 2011-09-30 (+7d) | 5d? → 5d | 60d → 43d |  |  |
| 58 | Definir Projeto Piloto | 2011-09-19 → 2011-09-26 (+7d) | 2011-09-23 → 2011-09-30 (+7d) | 5d? → 5d | 60d → 36d | none → 53FS-10d | constraint finish no earlier than 2011-09-23 → none; resources Analista de Implantação → Analista de Requisitos |
| 59 | **Execução do Projeto Piloto** |  |  | 35d? → 31d | 15d → 3d |  |  |
| 60 | Iniciar o Projeto Piloto |  |  |  | 15d → 3d | none → 49 | constraint start no earlier than 2011-10-10 → none; resources Analista de Implantação → Analista de Implantação; Analista de Requisitos |
| 61 | Acompanhar Projeto Piloto | 2011-10-12 → 2011-10-13 (+1d) |  | 33d? → 29d | 15d → 3d |  | was named Suportar o Projeto Piloto; resources Analista de Implantação [10%] → Analista de Implantação [25%] |
| 63 | **Treinamentos** | 2011-11-21 → 2011-11-10 (-11d) | 2011-12-14 → 2011-12-06 (-8d) | 18d? → 17d | 2d → 5d |  |  |
| 64 | **Desenvolvimento dos Treinamentos** | 2011-11-21 → 2011-11-10 (-11d) |  | 10d → 15d | 6d → 7d |  |  |
| 65 | Elaborar Treinamento | 2011-11-21 → 2011-11-10 (-11d) |  | 5d → 10d | 6d → 7d | none → 61FS-10d | constraint start no earlier than 2011-11-21 → none; resources Analista de Treinamento; Analista de Implantação [20%] → Analista de Implantação [50%] |
| 66 | Preparar Material e Infraestrutura |  |  |  | 6d → 9d |  | constraint start no earlier than 2011-11-28 → none; resources Analista de Treinamento → Analista de RH |
| 67 | **Treinamento Equipe de Suporte/TI** | 2011-12-05 → 2011-11-28 (-7d) | 2011-12-07 → 2011-11-30 (-7d) | 3d? → 3d | 6d → 3d |  |  |
| 68 | Executar Treinamento Teórico | 2011-12-05 → 2011-11-28 (-7d) | 2011-12-05 → 2011-11-28 (-7d) |  | 6d → 3d | 66 → 61 | constraint start no earlier than 2011-12-05 → none; resources Analista de Treinamento; Analista de Implantação → Analista de RH [20%]; Analista de Implantação |
| 69 | Executar Treinamento Prático | 2011-12-06 → 2011-11-29 (-7d) | 2011-12-07 → 2011-11-30 (-7d) | 2d? → 2d | 6d → 3d |  | constraint finish no earlier than 2011-12-07 → none; resources Analista de Treinamento; Analista de Implantação → Analista de RH [20%]; Analista de Implantação |
| 70 | **Treinamento Funcionários Setor de Vendas (Internos)** | 2011-12-08 → 2011-12-01 (-7d) | 2011-12-09 → 2011-12-02 (-7d) | 2d? → 2d | 5d → 3d |  | was named Treinamento Funcionários Setor de Vendas |
| 71 | Executar Treinamento Teórico | 2011-12-08 → 2011-12-01 (-7d) | 2011-12-08 → 2011-12-01 (-7d) | 1d? → 1d | 5d → 3d | 66 → 69 | constraint start no earlier than 2011-12-08 → none; resources Analista de Treinamento → Analista de Implantação; Analista de RH [20%] |
| 72 | Executar Treinamento Prático | 2011-12-09 → 2011-12-02 (-7d) | 2011-12-09 → 2011-12-02 (-7d) |  | 5d → 3d |  | constraint start no earlier than 2011-12-09 → none; resources Analista de Treinamento → Analista de Implantação; Analista de RH [20%] |
| 73 | **Treinamento Vendedores Externos** | 2011-12-12 → 2011-12-05 (-7d) | 2011-12-13 → 2011-12-06 (-7d) | 2d? → 2d | 2d → 3d |  |  |
| 74 | Executar Treinamento Teórico | 2011-12-12 → 2011-12-05 (-7d) | 2011-12-12 → 2011-12-05 (-7d) | 1d? → 1d | 2d → 3d | 66 → 72 | constraint start no earlier than 2011-12-12 → none; resources Analista de Treinamento → Analista de Implantação; Analista de RH [20%] |
| 75 | Executar Treinamento Prático | 2011-12-13 → 2011-12-06 (-7d) | 2011-12-13 → 2011-12-06 (-7d) |  | 2d → 3d |  | constraint start no earlier than 2011-12-13 → none; resources Analista de Treinamento → Analista de Implantação; Analista de RH [20%] |

## Version 3 (saved 2011-07-30)

Last finish 2011-12-15 → 2011-12-19 (+4d).

Changed:

| ID | Task | Start | Finish | Duration | Total float | Predecessors |
| --- | --- | --- | --- | --- | --- | --- |
| 1 | **SALES FORCE** |  | 2011-12-15 → 2011-12-19 (+4d) | 156d → 158d |  |  |
| 3 | **Gerenciamento do Projeto** |  | 2011-12-15 → 2011-12-19 (+4d) | 156d → 158d |  |  |
| 19 | **Encerramento** |  | 2011-12-12 → 2011-12-19 (+7d) | 9d → 14d | 3d → 0d |  |
| 21 | Gerenciar a Reunião de Transição para Operação de Vendas | 2011-12-07 → 2011-12-16 (+9d) | 2011-12-07 → 2011-12-16 (+9d) |  | 4d → 1d |  |
| 22 | Preparar Relatório Final | 2011-12-01 → 2011-12-12 (+11d) | 2011-12-07 → 2011-12-16 (+9d) |  | 3d → 0d |  |
| 23 | Atualizar Ativos de Processos Organizacionais | 2011-12-12 → 2011-12-19 (+7d) | 2011-12-12 → 2011-12-19 (+7d) |  | 3d → 0d |  |
| 24 | Término do Projeto | 2011-12-12 → 2011-12-19 (+7d) | 2011-12-12 → 2011-12-19 (+7d) |  | 3d → 0d |  |
| 63 | **Treinamentos** |  | 2011-12-06 → 2011-12-15 (+9d) | 17d → 22d | 5d → 0d |  |
| 67 | **Treinamento Equipe de Suporte/TI** | 2011-11-28 → 2011-12-05 (+7d) | 2011-11-30 → 2011-12-07 (+7d) |  | 3d → 0d |  |
| 68 | Executar Treinamento Teórico | 2011-11-28 → 2011-12-05 (+7d) | 2011-11-28 → 2011-12-05 (+7d) |  | 3d → 0d | 61 → 62, 64 |
| 69 | Executar Treinamento Prático | 2011-11-29 → 2011-12-06 (+7d) | 2011-11-30 → 2011-12-07 (+7d) |  | 3d → 0d |  |
| 70 | **Treinamento Funcionários Setor de Vendas (Internos)** | 2011-12-01 → 2011-12-12 (+11d) | 2011-12-02 → 2011-12-13 (+11d) |  | 3d → 0d |  |
| 71 | Executar Treinamento Teórico | 2011-12-01 → 2011-12-12 (+11d) | 2011-12-01 → 2011-12-12 (+11d) |  | 3d → 0d |  |
| 72 | Executar Treinamento Prático | 2011-12-02 → 2011-12-13 (+11d) | 2011-12-02 → 2011-12-13 (+11d) |  | 3d → 0d |  |
| 73 | **Treinamento Vendedores Externos** | 2011-12-05 → 2011-12-14 (+9d) | 2011-12-06 → 2011-12-15 (+9d) |  | 3d → 0d |  |
| 74 | Executar Treinamento Teórico | 2011-12-05 → 2011-12-14 (+9d) | 2011-12-05 → 2011-12-14 (+9d) |  | 3d → 0d |  |
| 75 | Executar Treinamento Prático | 2011-12-06 → 2011-12-15 (+9d) | 2011-12-06 → 2011-12-15 (+9d) |  | 3d → 0d |  |
| 76 | **Transição para Operação de Vendas e Suporte** |  | 2011-12-07 → 2011-12-16 (+9d) | 8d → 13d | 4d → 1d |  |
| 78 | Efetuar Transição para Operação de Vendas e Suporte | 2011-12-07 → 2011-12-16 (+9d) | 2011-12-07 → 2011-12-16 (+9d) |  | 3d → 0d |  |

## Version 4 (saved 2011-08-04)

Last finish stays 2011-12-19.

Added:

| ID | Task | Duration | Start | Finish | Constraint | Resources |
| --- | --- | --- | --- | --- | --- | --- |
| 79 | Jantar de Confraternização | 0d | 2011-12-16 | 2011-12-16 | start no earlier than 2011-12-16 | Jantar de Confraternização |

Changed:

| ID | Task | Other |
| --- | --- | --- |
| 39 | Escolher e Contratar Fornecedores | resources Analista de Compras → Analista de Compras; Software Terminal Móvel; Terminal Móvel (Galaxy Ace) Comodato [6000%] |
| 66 | Preparar Material e Infraestrutura | resources Analista de RH → Analista de Implantação |
| 68 | Executar Treinamento Teórico | resources Analista de RH [20%]; Analista de Implantação → Analista de Implantação; Coffe Break [1200%]; Apostila Treinamento [500%]; Material Treinamento [500%] |
| 69 | Executar Treinamento Prático | resources Analista de RH [20%]; Analista de Implantação → Analista de Implantação; Coffe Break [2400%] |
| 71 | Executar Treinamento Teórico | resources Analista de Implantação; Analista de RH [20%] → Analista de Implantação; Coffe Break [1600%]; Apostila Treinamento [700%]; Material Treinamento [700%] |
| 72 | Executar Treinamento Prático | resources Analista de Implantação; Analista de RH [20%] → Analista de Implantação; Coffe Break [1600%] |
| 74 | Executar Treinamento Teórico | resources Analista de Implantação; Analista de RH [20%] → Analista de Implantação; Coffe Break [11200%]; Apostila Treinamento [5500%]; Material Treinamento [5500%] |
| 75 | Executar Treinamento Prático | resources Analista de Implantação; Analista de RH [20%] → Analista de Implantação; Coffe Break [11200%] |

## Version 5 (saved 2011-08-04)

Last finish stays 2011-12-19.

Added:

| ID | Task | Duration | Start | Finish | Resources |
| --- | --- | --- | --- | --- | --- |
| 81 | Reserva de Contingência | 0d | 2011-05-02 | 2011-05-02 | Reserva de Contingência |
